# Dynaslope2018

Schedule from ProjectLibre, 2018-02-01 to 2019-12-05.

## Calendars

- dyna2018: Mon-Fri 08:00-12:00, 13:00-17:00; Sat-Sun off. Exceptions (off unless hours are given): 2018-02-16, 2018-03-29 to 2018-03-30, 2018-04-09, 2018-05-01, 2018-06-12, 2018-08-21, 2018-08-27, 2018-11-01 to 2018-11-02, 2018-11-15 to 2018-12-31.

## Resources

| Resource | Group |
| --- | --- |
| Unassigned |  |
| geotech 1 |  |
| geotech 2 |  |
| geol 1 |  |
| geol 2 |  |
| geol 3 |  |
| geol 4 |  |
| geol 5 |  |
| data scientist 1 |  |
| data scientist 2 |  |
| data scientist 3 |  |
| data scientist 4 |  |
| social scientist 1 |  |
| social scientist 2 |  |
| any fsd |  |
| sys ad 2 |  |
| full stack dev 1 | full stack dev |
| full stack dev 2 | full stack dev |
| full stack dev 3 | full stack dev |
| full stack dev 4 | full stack dev |
| full stack dev 5 | full stack dev |
| programmer 1 |  |
| programmer 2 |  |
| db prog 6 |  |
| arduino prog 1 |  |
| rpi prog 1 |  |
| elec A 1 |  |
| elec A 2 |  |
| elec A 3 |  |
| elec B 1 |  |
| elec B 2 |  |
| DRRstaff1 |  |
| DRRstaff2 |  |
| DRRstaff3 |  |
| DRRstaff4 |  |
| DRRstaff5 |  |
| Communitydev1 |  |
| Communitydev2 |  |
| Communitydev3 |  |
| CommsOfficer1 |  |
| Designfacilitator1 |  |
| comm dev |  |
| monitoringPersonnel40+ |  |
| training specialist 1 |  |
| MEAL expert |  |
| admin 1 |  |
| db prog 1 |  |
| db prog 2 |  |
| db prog 3 |  |
| db prog 4 |  |
| db prog 5 |  |
| MEALstaff3 |  |
| DRRS 1 |  |
| admin 1 IO |  |
| admin 2 S2 |  |
| admin 3 PA |  |
| admin 4 PA |  |

## Schedule

| ID | WBS | Task | Duration | Start | Finish | Predecessors | Total slack | Constraint | Resources |
| --- | --- | --- | --- | --- | --- | --- | --- | --- | --- |
| 1 | 1 | **Landslide risk information** | 437.13d | 2018-02-01 | 2019-12-05 |  | 34.96d |  |  |
| 2 | 1.1 | **methods report (Hazards)** | 169.7d | 2018-03-05 | 2018-11-08 |  | 24642.6d |  |  |
| 3 | 1.1.1 | MoMs | 16.13d | 2018-03-05 | 2018-03-27 |  | 39600.1d |  | geol 2 [62%] |
| 4 | 1.1.2 | MoMs | 12.12d | 2018-03-05 | 2018-03-21 |  | 40000.8d | start no earlier than 2018-02-01 | geol 4 [66%] |
| 5 | 1.1.3 | report review | 4d | 2018-03-27 | 2018-04-02 | 3, 4 | 39800.1d |  | elec A 2 [50%] |
| 6 | 1.1.4 | study surficial displacement behaviour | 22.58d | 2018-03-05 | 2018-04-04 |  | -558.06d |  | geol 1 [62%] |
| 7 | 1.1.5 | study surficial displacement behaviour | 18.18d | 2018-03-05 | 2018-03-29 |  | -300d |  | geol 3 [66%] |
| 8 | 1.1.6 | report review | 4d | 2018-04-04 | 2018-04-10 | 6, 7 | -558.06d | start no earlier than 2018-03-26 | elec A 2 [50%] |
| 9 | 1.1.7 | **slope stability models (FEM)** | 115.22d | 2018-03-26 | 2018-09-12 |  | 28590.7d |  |  |
| 10 | 1.1.7.1 | review related literature | 25.93d | 2018-03-26 | 2018-04-30 |  | -3381.48d |  | geotech 1 [54%] |
| 11 | 1.1.7.2 | develop prototype | 12.96d | 2018-04-30 | 2018-05-17 | 10 | -3281.48d | start no earlier than 2018-02-21 | geotech 1 [54%] |
| 12 | 1.1.7.3 | test model with monitoring data | 25.93d | 2018-05-17 | 2018-06-22 | 11 | -3581.48d | start no earlier than 2018-03-02 | geotech 1 [54%] |
| 13 | 1.1.7.4 | field data gathering (3sites) | 33.33d | 2018-06-22 | 2018-08-09 | 11, 12 | -500.01d | start no earlier than 2018-05-02 | geotech 1 [54%] |
| 14 | 1.1.7.5 | field data gathering (3sites) | 18d | 2018-05-03 | 2018-05-28 | 11, 12 |  | must start on 2018-05-03 |  |
| 15 | 1.1.7.6 | evaluate model (report as PI of slope stab model) | 7.41d | 2018-08-09 | 2018-08-20 | 12, 13, 14 | -544.47d | start no earlier than 2018-08-01 | geotech 1 [54%] |
| 16 | 1.1.7.7 | write report | 7.41d | 2018-08-20 | 2018-08-29 | 15 | -7055.55d | start no earlier than 2018-05-09 | geotech 1 [54%] |
| 17 | 1.1.7.8 | develop training materials | 5.56d | 2018-08-29 | 2018-09-06 | 16 | -7296.28d | start no earlier than 2018-05-15 | geotech 1 [54%] |
| 18 | 1.1.7.9 | conduct training | 3.7d | 2018-09-06 | 2018-09-12 | 17 | -7551.84d | start no earlier than 2018-05-18 | geotech 1 [54%] |
| 19 | 1.1.7.10 | report review (4 days) | 0d | 2018-08-29 | 2018-08-29 | 16 | 29516.7d |  | elec A 2 [50%] |
| 20 | 1.1.8 | **slope stability models (LEM1)** | 98.85d | 2018-03-08 | 2018-07-31 |  | -4059.24d |  |  |
| 21 | 1.1.8.1 | review related literature | 16.67d | 2018-03-08 | 2018-04-03 |  |  | start no earlier than 2018-03-12 | geotech 2 [54%] |
| 22 | 1.1.8.2 | develop prototype | 9.26d | 2018-04-03 | 2018-04-16 | 21 | -2100d | start no earlier than 2018-02-14 | geotech 2 [54%] |
| 23 | 1.1.8.3 | test model with monitoring data | 9.26d | 2018-05-21 | 2018-06-01 | 22 |  | start no earlier than 2018-05-21 | geotech 2 [54%] |
| 24 | 1.1.8.4 | field data gathering | 22.22d | 2018-06-01 | 2018-07-03 | 22, 23 | -5325.92d | start no earlier than 2018-03-15 | geotech 2 [54%] |
| 25 | 1.1.8.5 | field data gathering | 12d | 2018-06-01 | 2018-06-20 | 22, 23 | -5325.92d | start no earlier than 2018-03-08 |  |
| 26 | 1.1.8.6 | evaluate model (report as PI of slope stab model) | 5.56d | 2018-07-03 | 2018-07-11 | 23, 24, 25 | -6348.14d | start no earlier than 2018-04-02 | geotech 2 [54%] |
| 27 | 1.1.8.7 | write report | 5.56d | 2018-07-11 | 2018-07-18 | 26 | -6603.69d | start no earlier than 2018-04-05 | geotech 2 [54%] |
| 28 | 1.1.8.8 | develop training materials | 5.56d | 2018-07-18 | 2018-07-26 | 27 | -6859.25d | start no earlier than 2018-04-10 | geotech 2 [54%] |
| 29 | 1.1.8.9 | conduct training | 3.7d | 2018-07-26 | 2018-07-31 | 28 | -7114.8d | start no earlier than 2018-04-13 | geotech 2 [54%] |
| 30 | 1.1.8.10 | report review (4 days) | 0d | 2018-07-18 | 2018-07-18 | 27 | -6359.25d |  | elec A 2 [50%] |

| ID | WBS | Task | Duration | Start | Finish | Predecessors | Total slack | Constraint | Resources |
| --- | --- | --- | --- | --- | --- | --- | --- | --- | --- |
| 31 | 1.1.9 | **slope stability models (LEM2)** | 67.85d | 2018-07-31 | 2018-11-08 | 20 | -7385.17d | start no earlier than 2018-04-17 |  |
| 32 | 1.1.9.1 | review related literature | 9.26d | 2018-07-31 | 2018-08-14 |  | -7285.17d | start no earlier than 2018-04-17 | geotech 2 [54%] |
| 33 | 1.1.9.2 | develop prototype | 9.26d | 2018-08-14 | 2018-08-27 | 32 | -7399.97d | start no earlier than 2018-04-24 | geotech 2 [54%] |
| 34 | 1.1.9.3 | test model with monitoring data | 9.26d | 2018-08-28 | 2018-09-10 | 33 | -7399.97d | start no earlier than 2018-05-01 | geotech 2 [54%] |
| 35 | 1.1.9.4 | field data gathering | 19.35d | 2018-09-10 | 2018-10-05 | 33, 34 | -7213.23d | start no earlier than 2018-05-08 |  |
| 36 | 1.1.9.5 | field data gathering | 22.22d | 2018-09-10 | 2018-10-10 | 33, 34 | -7499.97d | start no earlier than 2018-05-08 | geotech 2 [54%] |
| 37 | 1.1.9.6 | evaluate model (report as PI of slope stab model) | 5.56d | 2018-10-10 | 2018-10-18 | 34, 35, 36 | -7499.97d | start no earlier than 2018-06-04 | geotech 2 [54%] |
| 38 | 1.1.9.7 | write report | 5.56d | 2018-10-18 | 2018-10-25 | 37 | -7499.97d | start no earlier than 2018-06-07 | geotech 2 [54%] |
| 39 | 1.1.9.8 | develop training materials | 5.56d | 2018-10-25 | 2018-11-02 | 38 | -7385.17d | start no earlier than 2018-06-12 | geotech 2 [54%] |
| 40 | 1.1.9.9 | conduct training | 3.7d | 2018-11-05 | 2018-11-08 | 39 | -7385.17d | start no earlier than 2018-06-15 | geotech 2 [54%] |
| 41 | 1.1.9.10 | report review (4 days) | 0d | 2018-10-25 | 2018-10-25 | 38 | -6574.05d |  | elec A 2 [50%] |
| 42 | 1.1.10 | **runout model 1** | 57.28d | 2018-04-02 | 2018-06-25 |  | -256.3d | start no earlier than 2018-02-19 |  |
| 43 | 1.1.10.1 | review related literature | 15.15d | 2018-04-02 | 2018-04-23 |  |  | start no earlier than 2018-04-02 | geol 5 [66%] |
| 44 | 1.1.10.2 | develop prototype | 4.55d | 2018-04-23 | 2018-04-27 | 43 | -71.73d | start no earlier than 2018-03-05 | geol 5 [66%] |
| 45 | 1.1.10.3 | test model with monitoring data | 7.58d | 2018-04-27 | 2018-05-09 | 44 | -71.73d | start no earlier than 2018-03-08 | geol 5 [66%] |
| 46 | 1.1.10.4 | evaluate model (report as PI of runout model) | 4.55d | 2018-05-09 | 2018-05-16 | 45 | -71.73d | start no earlier than 2018-03-15 | geol 5 [66%] |
| 47 | 1.1.10.5 | write report | 4.55d | 2018-05-17 | 2018-05-23 | 46 |  | must start on 2018-05-17 | geol 5 [66%] |
| 48 | 1.1.10.6 | develop training materials | 4.55d | 2018-06-13 | 2018-06-20 | 47 |  | start no earlier than 2018-06-13 | geol 5 [66%] |
| 49 | 1.1.10.7 | conduct training | 3.03d | 2018-06-20 | 2018-06-25 | 48 | -2818.33d | start no earlier than 2018-03-28 | geol 5 [66%] |
| 50 | 1.1.10.8 | report review | 4d | 2018-05-23 | 2018-05-29 | 47 | -1031.56d |  | elec A 2 [50%] |
| 51 | 1.1.11 | **runout model 2** | 36.36d | 2018-06-25 | 2018-08-14 | 42 | -5746.73d | start no earlier than 2018-03-30 |  |
| 52 | 1.1.11.1 | review related literature | 7.58d | 2018-06-25 | 2018-07-05 |  | -5716.41d | start no earlier than 2018-03-30 | geol 3 [66%] |
| 53 | 1.1.11.2 | develop prototype | 4.55d | 2018-07-05 | 2018-07-11 | 52 | -5716.41d | start no earlier than 2018-04-06 | geol 3 [66%] |
| 54 | 1.1.11.3 | test model with monitoring data | 7.58d | 2018-07-11 | 2018-07-23 | 53 | -5716.41d | start no earlier than 2018-04-11 | geol 3 [66%] |
| 55 | 1.1.11.4 | evaluate model (report as PI of runout model) | 4.55d | 2018-07-23 | 2018-07-27 | 54 | -5746.73d | start no earlier than 2018-04-18 | geol 3 [66%] |
| 56 | 1.1.11.5 | write report | 4.55d | 2018-07-27 | 2018-08-03 | 55 | -5746.73d | start no earlier than 2018-04-23 | geol 3 [66%] |
| 57 | 1.1.11.6 | develop training materials | 4.55d | 2018-08-03 | 2018-08-09 | 56 | -5746.73d | start no earlier than 2018-04-26 | geol 3 [66%] |
| 58 | 1.1.11.7 | conduct training | 3.03d | 2018-08-09 | 2018-08-14 | 57 | -5746.73d | start no earlier than 2018-05-01 | geol 3 [66%] |
| 59 | 1.1.11.8 | report review | 4d | 2018-08-03 | 2018-08-09 | 56 | -5389.17d |  | elec A 2 [50%] |

Notes:
- 43: from MDPM (original start Feb 26)
- 44: from MDPM
- 45: from MDPM
- 46: from MDPM
- 47: from MDPM
- 48: from MDPM
- 52: from JJDRS
- 53: from JJDRS
- 54: from JJDRS
- 55: from JJDRS
- 56: from JJDRS
- 57: from JJDRS
- 58: from JJDRS

| ID | WBS | Task | Duration | Start | Finish | Predecessors | Total slack | Constraint | Resources |
| --- | --- | --- | --- | --- | --- | --- | --- | --- | --- |
| 60 | 1.2 | **per site landslide risk reports (focus sites)** | 437.13d | 2018-02-01 | 2019-12-05 |  | 34.96d |  |  |
| 61 | 1.2.1 | integration of hazard, capacity, and vulnerability information | 10d | 2018-02-01 | 2018-02-14 |  |  | start no earlier than 2018-02-01 | elec A 2 [50%] |
| 62 | 1.2.2 | **RTK-RTS (7 sites) - 3 surveys per year** | 435.13d | 2018-02-05 | 2019-12-05 |  | 34.96d | start no earlier than 2018-02-23 |  |
| 63 | 1.2.2.1 | **Q1-Q2 hazard reports** | 127.18d | 2018-02-05 | 2018-08-09 |  | 30829.8d | start no earlier than 2018-02-23 |  |
| 64 | 1.2.2.1.1 | **Q1-Q2 hazard reports for 3 sites (rts/rtk) Luzon** | 65.96d | 2018-03-06 | 2018-06-11 |  | 34951.8d | start no earlier than 2018-02-23 |  |
| 65 | 1.2.2.1.1.1 | conduct quarterly survey (RTS/RTK/remap) | 19.35d | 2018-04-12 | 2018-05-09 |  | 34951.8d | start no earlier than 2018-04-12 | geol 2 [62%] |
| 66 | 1.2.2.1.1.2 | conduct quarterly survey (RTS/RTK/remap) | 18.18d | 2018-03-06 | 2018-03-30 |  | 37487.2d | start no earlier than 2018-03-06 | geol 4 [66%] |
| 67 | 1.2.2.1.1.3 | consolidate field notes | 4.84d | 2018-05-09 | 2018-05-16 | 65, 66 | 34951.8d | start no earlier than 2018-03-22 | geol 2 [62%] |
| 68 | 1.2.2.1.1.4 | consolidate field notes | 4.55d | 2018-05-09 | 2018-05-15 | 65, 66 | 34981.1d | start no earlier than 2018-03-22 | geol 4 [66%] |
| 69 | 1.2.2.1.1.5 | analyze monitoring data (requires access to database) | 9.68d | 2018-05-16 | 2018-05-29 | 67, 68, 76 | 34951.8d | start no earlier than 2018-03-29 | geol 2 [62%] |
| 70 | 1.2.2.1.1.6 | analyze monitoring data (requires access to database) | 4.55d | 2018-05-16 | 2018-05-22 | 67, 68, 76 | 35464.9d | start no earlier than 2018-03-29 | geol 4 [66%] |
| 71 | 1.2.2.1.1.7 | update volume, depth, extent (using current models) | 9.09d | 2018-05-29 | 2018-06-11 | 69, 70 | 34951.8d | start no earlier than 2018-04-11 | geol 4 [66%] |
| 72 | 1.2.2.1.1.8 | update thresholds with monitoring data and performance index | 6.57d | 2018-05-29 | 2018-06-07 | 69, 70 | 35203.8d | start no earlier than 2018-04-11 | data scientist 1 [50%] |
| 73 | 1.2.2.1.2 | **Q1-Q2 hazard reports for 2 sites (rts/rtk) Samar** | 81.71d | 2018-02-05 | 2018-06-05 |  | 35377.1d | start no earlier than 2018-04-25 |  |
| 74 | 1.2.2.1.2.1 | conduct quarterly survey (RTS/RTK/remap) | 1d | 2018-02-05 | 2018-02-05 |  | 43447.9d | start no earlier than 2018-05-08 | geol 1 [62%] |
| 75 | 1.2.2.1.2.2 | conduct quarterly survey (RTS/RTK/remap) | 1d | 2018-02-05 | 2018-02-05 |  | 43447.9d | start no earlier than 2018-05-08 | geol 4 [66%] |
| 76 | 1.2.2.1.2.3 | consolidate field notes | 4.84d | 2018-05-09 | 2018-05-16 | 66, 65 | 34951.8d | start no earlier than 2018-03-22 | geol 1 [62%] |
| 77 | 1.2.2.1.2.4 | consolidate field notes | 0d | 2018-05-09 | 2018-05-09 | 65, 66 | 35699.5d | start no earlier than 2018-03-22 | geol 4 [66%] |
| 78 | 1.2.2.1.2.5 | analyze monitoring data (requires access to database) | 6.45d | 2018-05-14 | 2018-05-23 | 77 | 35377.1d | start no earlier than 2018-05-14 | geol 1 [62%] |
| 79 | 1.2.2.1.2.6 | analyze monitoring data (requires access to database) | 3.03d | 2018-05-14 | 2018-05-17 | 77 | 35719.2d | start no earlier than 2018-05-14 | geol 4 [66%] |
| 80 | 1.2.2.1.2.7 | update volume, depth, extent (using current models) | 9.68d | 2018-05-23 | 2018-06-05 | 78, 79 | 35377.1d | start no earlier than 2018-05-18 | geol 1 [62%] |
| 81 | 1.2.2.1.2.8 | update thresholds with monitoring data and performance index | 0d | 2018-05-23 | 2018-05-23 | 78, 79 | 36344.8d | start no earlier than 2018-05-18 | data scientist 1 [50%] |
| 82 | 1.2.2.1.3 | **Q1-Q2 hazard reports for 2 sites (rts/rtk) Iloilo** | 76.18d | 2018-04-23 | 2018-08-09 |  | 30829.8d | start no earlier than 2018-05-09 |  |
| 83 | 1.2.2.1.3.1 | conduct quarterly survey (RTS/RTK/remap) | 9.09d | 2018-04-23 | 2018-05-04 |  |  | must start on 2018-04-23 | geol 3 [66%] |
| 84 | 1.2.2.1.3.2 | conduct quarterly survey (RTS/RTK/remap) | 9.09d | 2018-04-23 | 2018-05-04 |  |  | must start on 2018-04-23 | geol 4 [66%] |
| 85 | 1.2.2.1.3.3 | consolidate field notes | 3.03d | 2018-05-31 | 2018-06-06 |  | 33526.9d | start no earlier than 2018-05-31 | geol 3 [66%] |
| 86 | 1.2.2.1.3.4 | consolidate field notes | 3.03d | 2018-06-04 | 2018-06-07 |  | 33417.8d | start no earlier than 2018-06-04 | geol 4 [66%] |
| 87 | 1.2.2.1.3.5 | analyze monitoring data (requires access to database) | 9.09d | 2018-07-16 | 2018-07-27 | 85, 86 | 30829.8d | start no earlier than 2018-07-16 | geol 3 [66%] |
| 88 | 1.2.2.1.3.6 | analyze monitoring data (requires access to database) | 4.55d | 2018-07-02 | 2018-07-06 | 86, 85 | 32284.3d | start no earlier than 2018-07-02 | geol 4 [66%] |
| 89 | 1.2.2.1.3.7 | update volume, depth, extent (using current models) | 9.09d | 2018-07-27 | 2018-08-09 | 87, 88 | 30829.8d | start no earlier than 2018-05-29 | geol 3 [66%] |
| 90 | 1.2.2.1.3.8 | update thresholds with monitoring data and performance index | 0d | 2018-07-27 | 2018-07-27 | 87, 88 | 31738.8d | start no earlier than 2018-05-29 | data scientist 1 [50%] |

Notes:
- 65: from NASV (March 6 dapat start)
- 66: from ACJ (March 6 dapat start)
- 67: from NASV (March 6 dapat start)
- 68: from ACJ (March 6 dapat start)
- 69: from NASV (March 6 dapat start)
- 70: from ACJ (March 6 dapat start)
- 71: from NASV (March 6 dapat start)
- 83: from MDPM
- 84: from JJDRS
- 85: from MDPM
- 86: from JJDRS
- 87: from MDPM
- 88: from JJDRS
- 89: from MDPM

| ID | WBS | Task | Duration | Start | Finish | Predecessors | Total slack | Constraint | Resources |
| --- | --- | --- | --- | --- | --- | --- | --- | --- | --- |
| 91 | 1.2.2.2 | **Q3 hazard reports** | 94d | 2018-07-01 | 2018-11-19 |  | 24247.9d | start no earlier than 2018-06-06 |  |
| 92 | 1.2.2.2.1 | **Q3 hazard reports for 3 sites (rts/rtk) Luzon** | 48.37d | 2018-07-01 | 2018-09-10 |  | 28810.6d | start no earlier than 2018-07-09 |  |
| 93 | 1.2.2.2.1.1 | conduct quarterly survey (RTS/RTK/remap) | 19.35d | 2018-07-01 | 2018-07-27 |  |  | must start on 2018-07-01 | geol 2 [62%] |
| 94 | 1.2.2.2.1.2 | conduct quarterly survey (RTS/RTK/remap) | 12d | 2018-07-01 | 2018-07-17 |  |  | must start on 2018-07-01 | geol 5 [66%] |
| 95 | 1.2.2.2.1.3 | consolidate field notes | 4.84d | 2018-07-27 | 2018-08-03 | 93, 94 | 28993.1d | start no earlier than 2018-07-25 | geol 2 [62%] |
| 96 | 1.2.2.2.1.4 | consolidate field notes | 0d | 2018-07-27 | 2018-07-27 | 93, 94 | 29477d | start no earlier than 2018-07-25 | geol 5 [66%] |
| 97 | 1.2.2.2.1.5 | analyze monitoring data (requires access to database) | 9.68d | 2018-08-09 | 2018-08-22 | 95, 96 | 28710.6d | start no earlier than 2018-08-09 | geol 2 [62%] |
| 98 | 1.2.2.2.1.6 | analyze monitoring data (requires access to database) | 4.55d | 2018-08-13 | 2018-08-17 | 95, 96 | 28925.6d | start no earlier than 2018-08-13 | geol 5 [66%] |
| 99 | 1.2.2.2.1.7 | update volume, depth, extent (using current models) | 9.68d | 2018-08-22 | 2018-09-05 | 97, 98 | 28810.6d | start no earlier than 2018-08-07 | geol 2 [62%] |
| 100 | 1.2.2.2.1.8 | update thresholds with monitoring data and performance index | 0d | 2018-08-22 | 2018-08-22 | 97, 98 | 29978.3d | start no earlier than 2018-08-07 | data scientist 1 [50%] |
| 101 | 1.2.2.2.1.9 | update per site hazard reports (updated maps as PI) | 3d | 2018-09-05 | 2018-09-10 | 99 | 28810.6d | start no earlier than 2018-08-15 |  |
| 102 | 1.2.2.2.2 | **Q3 hazard reports for 2 sites (rts/rtk) Samar** | 35.68d | 2018-07-18 | 2018-09-07 |  | 28880.2d | start no earlier than 2018-07-25 |  |
| 103 | 1.2.2.2.2.1 | conduct quarterly survey (RTS/RTK/remap) | 9.09d | 2018-07-18 | 2018-07-31 |  |  | must start on 2018-07-18 | geol 4 [66%] |
| 104 | 1.2.2.2.2.2 | conduct quarterly survey (RTS/RTK/remap) | 9.68d | 2018-07-18 | 2018-07-31 |  |  | must start on 2018-07-18 | geol 1 [62%] |
| 105 | 1.2.2.2.2.3 | consolidate field notes | 3.03d | 2018-08-07 | 2018-08-10 | 103, 104 | 30677.2d | start no earlier than 2018-08-07 | geol 4 [66%] |
| 106 | 1.2.2.2.2.4 | consolidate field notes | 3.23d | 2018-07-31 | 2018-08-03 | 103, 104 | 31157.6d | start no earlier than 2018-07-02 | geol 1 [62%] |
| 107 | 1.2.2.2.2.5 | analyze monitoring data (requires access to database) | 6.06d | 2018-08-06 | 2018-08-14 |  | 29332.8d | start no earlier than 2018-08-06 | geol 4 [66%] |
| 108 | 1.2.2.2.2.6 | analyze monitoring data (requires access to database) | 3.23d | 2018-08-06 | 2018-08-09 |  | 29616.2d | start no earlier than 2018-08-06 | geol 1 [62%] |
| 109 | 1.2.2.2.2.7 | update volume, depth, extent (using current models) | 9.09d | 2018-08-14 | 2018-08-27 | 107, 108 | 29447.9d | start no earlier than 2018-08-10 | geol 4 [66%] |
| 110 | 1.2.2.2.2.8 | update thresholds with monitoring data and performance index | 4.4d | 2018-08-14 | 2018-08-20 | 107, 108 | 30101.8d | start no earlier than 2018-08-10 | data scientist 1 [50%] |
| 111 | 1.2.2.2.2.9 | update per site hazard reports (updated maps as PI) | 3d | 2018-09-04 | 2018-09-07 | 109 | 28880.2d | start no earlier than 2018-09-04 |  |
| 112 | 1.2.2.2.3 | **Q3 hazard reports for 2 sites (rts/rtk) Iloilo** | 72d | 2018-08-01 | 2018-11-16 |  | 24247.9d | start no earlier than 2018-08-20 |  |
| 113 | 1.2.2.2.3.1 | conduct quarterly survey (RTS/RTK/remap) | 9.09d | 2018-08-01 | 2018-08-14 |  |  | must start on 2018-08-01 | geol 5 [66%] |
| 114 | 1.2.2.2.3.2 | conduct quarterly survey (RTS/RTK/remap) | 9.68d | 2018-08-01 | 2018-08-14 |  |  | must start on 2018-08-01 | geol 2 [62%] |
| 115 | 1.2.2.2.3.3 | consolidate field notes | 3.03d | 2018-08-31 | 2018-09-05 | 113, 114 | 29077.2d | start no earlier than 2018-08-31 | geol 5 [66%] |
| 116 | 1.2.2.2.3.4 | consolidate field notes | 3.23d | 2018-08-31 | 2018-09-05 | 113, 114 | 29057.6d | start no earlier than 2018-08-31 | geol 2 [62%] |
| 117 | 1.2.2.2.3.5 | update volume, depth, extent (using current models) | 9.09d | 2018-09-11 | 2018-09-24 |  | 3200.71d | start no earlier than 2018-09-11 | geol 5 [66%] |
| 118 | 1.2.2.2.3.6 | update thresholds with monitoring data and performance index | 4.4d | 2018-09-11 | 2018-09-18 |  | 28217.7d | start no earlier than 2018-09-11 | data scientist 1 [50%] |
| 119 | 1.2.2.2.3.7 | update per site hazard reports (updated maps as PI) | 4.55d | 2018-11-12 | 2018-11-16 | 117 |  | start no earlier than 2018-11-12 | geol 5 [66%] |
| 120 | 1.2.2.2.4 | Integration of RTK reports | 1.5d | 2018-11-16 | 2018-11-19 | 119 |  | must start on 2018-11-16 | geol 4; geol 5 |

Notes:
- 93: from ACJ
- 95: from ACJ
- 97: from ACJ
- 99: from ACJ
- 101: from ACJ
- 103: from NASV (from July 25)
- 104: from MJMR
- 105: from NASV
- 106: from MJMR
- 107: from NASV
- 108: from MJMR
- 109: from NASV
- 111: from MJMR
- 113: from JJDRS
- 114: from MJMR
- 115: from JJDRS
- 116: from MJMR
- 117: from JJDRS
- 119: from JJDRS
- 120: from NASV

| ID | WBS | Task | Duration | Start | Finish | Predecessors | Total slack | Constraint | Resources |
| --- | --- | --- | --- | --- | --- | --- | --- | --- | --- |
| 121 | 1.2.2.3 | **Q4 hazard reports** | 273.13d | 2018-10-01 | 2019-12-05 |  | 34.96d | start no earlier than 2018-10-01 |  |
| 122 | 1.2.2.3.1 | **Q4 hazard reports for 3 sites (rts/rtk) Luzon** | 44.77d | 2018-10-01 | 2019-01-18 |  | 22870.5d | start no earlier than 2018-10-01 |  |
| 123 | 1.2.2.3.1.1 | conduct quarterly survey (RTS/RTK/remap) | 18.18d | 2018-10-01 | 2018-10-25 |  |  | must start on 2018-10-01 | geol 4 [66%] |
| 124 | 1.2.2.3.1.2 | conduct quarterly survey (RTS/RTK/remap) | 19.35d | 2018-10-01 | 2018-10-26 |  | 21877.2d | start no earlier than 2018-10-01 | geol 2 [62%] |
| 125 | 1.2.2.3.1.3 | consolidate field notes | 6.89d | 2018-10-26 | 2018-11-06 | 123, 124 | 22168.9d |  | geol 4 [66%] |
| 126 | 1.2.2.3.1.4 | consolidate field notes | 7.8d | 2018-10-26 | 2018-11-07 | 123, 124 | 22077.2d |  | geol 2 [62%] |
| 127 | 1.2.2.3.1.5 | analyze monitoring data (requires access to database) | 13.77d | 2018-11-07 | 2018-11-26 | 126, 125 | 22870.5d |  | geol 4 [66%] |
| 128 | 1.2.2.3.1.6 | analyze monitoring data (requires access to database) | 7.8d | 2018-11-07 | 2018-11-16 | 126, 125 | 22870.5d |  | geol 2 [62%] |
| 129 | 1.2.2.3.1.7 | update volume, depth, extent (using current models) | 13.77d | 2019-01-01 | 2019-01-18 | 127, 128 | 22870.5d |  | geol 4 [66%] |
| 130 | 1.2.2.3.1.8 | update thresholds with monitoring data and performance index | 0d | 2019-01-01 | 2019-01-01 | 127, 128 | 24147.9d |  | data scientist 1 [50%] |
| 131 | 1.2.2.3.2 | **Q4 hazard reports for 2 sites (rts/rtk) Samar** | 253.13d | 2018-10-28 | 2019-12-05 |  | 34.96d | start no earlier than 2018-10-26 |  |
| 132 | 1.2.2.3.2.1 | conduct quarterly survey (RTS/RTK/remap) | 22.22d | 2018-10-28 | 2018-11-28 |  | 22747.9d | start no earlier than 2018-10-28 | geotech 1 [54%] |
| 133 | 1.2.2.3.2.2 | conduct quarterly survey (RTS/RTK/remap) | 18.18d | 2018-10-28 | 2018-11-22 |  | 22747.9d | start no earlier than 2018-10-28 | geol 5 [66%] |
| 134 | 1.2.2.3.2.3 | consolidate field notes | 5.56d | 2019-10-28 | 2019-11-04 | 132, 133 | 1057.16d | start no earlier than 2019-10-28 | geotech 1 [54%] |
| 135 | 1.2.2.3.2.4 | consolidate field notes | 4.55d | 2019-01-01 | 2019-01-07 | 132, 133 | 22593.4d |  | geol 5 [66%] |
| 136 | 1.2.2.3.2.5 | analyze monitoring data (requires access to database) | 11.11d | 2019-11-04 | 2019-11-20 | 134, 135 | 546.06d |  | geotech 1 [54%] |
| 137 | 1.2.2.3.2.6 | analyze monitoring data (requires access to database) | 4.55d | 2019-11-04 | 2019-11-11 | 134, 135 | 1202.62d |  | geol 5 [66%] |
| 138 | 1.2.2.3.2.7 | update volume, depth, extent (using current models) | 11.11d | 2019-11-20 | 2019-12-05 | 136, 137 | 34.96d |  | geotech 1 [54%] |
| 139 | 1.2.2.3.2.8 | update thresholds with monitoring data and performance index | 0d | 2019-11-20 | 2019-11-20 | 136, 137 | 1146.06d |  | data scientist 1 [50%] |
| 140 | 1.2.2.3.3 | **Q4 hazard reports for 2 sites (rts/rtk) Iloilo** | 31.27d | 2018-11-05 | 2019-02-01 |  | 21921.2d | start no earlier than 2018-11-13 |  |
| 141 | 1.2.2.3.3.1 | conduct quarterly survey (RTS/RTK/remap) | 22.23d | 2018-11-05 | 2018-12-05 |  |  | must start on 2018-11-05 | geotech 2 [54%] |
| 142 | 1.2.2.3.3.2 | conduct quarterly survey (RTS/RTK/remap) | 18.18d | 2018-11-05 | 2018-11-29 |  | 1200d | must start on 2018-11-05 | geol 3 [66%] |
| 143 | 1.2.2.3.3.3 | consolidate field notes | 5.56d | 2019-01-01 | 2019-01-08 | 141, 142 | 22432.4d |  | geotech 2 [54%] |
| 144 | 1.2.2.3.3.4 | consolidate field notes | 4.55d | 2019-01-01 | 2019-01-07 | 141, 142 | 22533.4d |  | geol 3 [66%] |
| 145 | 1.2.2.3.3.5 | analyze monitoring data (requires access to database) | 11.11d | 2019-01-08 | 2019-01-23 | 143, 144 | 21921.2d |  | geotech 2 [54%] |
| 146 | 1.2.2.3.3.6 | analyze monitoring data (requires access to database) | 4.55d | 2019-01-08 | 2019-01-15 | 143, 144 | 22577.8d |  | geol 3 [66%] |
| 147 | 1.2.2.3.3.7 | update thresholds with monitoring data and performance index | 6.6d | 2019-01-23 | 2019-02-01 | 145, 146 | 21921.2d |  | data scientist 1 [50%] |

Notes:
- 123: from NASV
- 124: from MDPM
- 125: from NASV
- 126: from MDPM
- 127: from NASV
- 128: from MDPM
- 129: from NASV
- 132: from RANK
- 133: from MJMR
- 134: from RANK
- 135: from MJMR
- 136: from RANK
- 137: from MJMR
- 138: from RANK
- 141: from ACJ
- 142: from JJDRS
- 143: from ACJ
- 144: from JJDRS
- 145: from ACJ
- 146: from JJDRS

| ID | WBS | Task | Duration | Start | Finish | Predecessors | Total slack | Constraint | Resources |
| --- | --- | --- | --- | --- | --- | --- | --- | --- | --- |
| 148 | 1.2.3 | **hazard report (site resurvey 5 sites)** | 132d | 2018-02-01 | 2018-08-13 |  | 7500d | start no earlier than 2018-05-24 |  |
| 149 | 1.2.3.1 | **Site 1 Hazard Report** | 44d | 2018-02-01 | 2018-04-06 |  |  | start no earlier than 2018-06-18 |  |
| 150 | 1.2.3.1.1 | conduct fieldwork (resurvey) | 5d | 2018-03-13 | 2018-03-19 | 155, 154 |  | must start on 2018-03-13 |  |
| 151 | 1.2.3.1.2 | conduct fieldwork (resurvey) | 5d | 2018-03-13 | 2018-03-19 | 154, 155 |  | must start on 2018-03-13 |  |
| 152 | 1.2.3.1.3 | consolidate field notes | 1d | 2018-03-21 | 2018-03-22 | 150, 151 |  | must start on 2018-03-21 |  |
| 153 | 1.2.3.1.4 | consolidate field notes | 1d | 2018-03-23 | 2018-03-26 | 150, 151 |  | must start on 2018-03-23 |  |
| 154 | 1.2.3.1.5 | review and identify active sites | 1d | 2018-02-01 | 2018-02-01 |  |  | must start on 2018-02-01 |  |
| 155 | 1.2.3.1.6 | review and identify active sites | 1d | 2018-02-01 | 2018-02-01 |  |  | must start on 2018-02-01 |  |
| 156 | 1.2.3.1.7 | analyze monitoring data (requires access to database) | 3d | 2018-03-27 | 2018-04-02 | 153, 152 |  | must start on 2018-03-27 |  |
| 157 | 1.2.3.1.8 | update volume, depth, extent (using current models) | 2d | 2018-04-02 | 2018-04-03 | 156 |  | must start on 2018-04-02 |  |
| 158 | 1.2.3.1.9 | update thresholds with monitoring data and performance index | 0d | 2018-03-19 | 2018-03-19 | 157 |  | must start on 2018-03-19 | data scientist 1 [50%] |
| 159 | 1.2.3.1.10 | update per site hazard reports (updated maps as PI) | 3d | 2018-04-04 | 2018-04-06 | 157 |  | must start on 2018-04-04 |  |
| 160 | 1.2.3.2 | **Site 2 Hazard Report** | 15.1d | 2018-04-09 | 2018-05-02 |  |  | start no earlier than 2018-07-09 |  |
| 161 | 1.2.3.2.1 | conduct fieldwork (resurvey) | 5d | 2018-04-09 | 2018-04-16 |  |  | must start on 2018-04-09 |  |
| 162 | 1.2.3.2.2 | conduct fieldwork (resurvey) | 5d | 2018-04-09 | 2018-04-16 |  |  | must start on 2018-04-09 |  |
| 163 | 1.2.3.2.3 | consolidate field notes | 1d | 2018-04-19 | 2018-04-20 | 161, 162 |  | must start on 2018-04-19 |  |
| 164 | 1.2.3.2.4 | consolidate field notes | 1d | 2018-04-19 | 2018-04-20 | 161, 162 |  | must start on 2018-04-19 |  |
| 165 | 1.2.3.2.5 | analyze monitoring data (requires access to database) | 3d | 2018-04-19 | 2018-04-24 | 163, 164 |  | must start on 2018-04-19 |  |
| 166 | 1.2.3.2.6 | update volume, depth, extent (using current models) | 2d | 2018-04-24 | 2018-04-26 | 165 |  | must start on 2018-04-24 |  |
| 167 | 1.2.3.2.7 | update thresholds with monitoring data and performance index | 0d | 2018-04-17 | 2018-04-17 | 171, 172 |  | must start on 2018-04-17 | data scientist 1 [50%] |
| 168 | 1.2.3.2.8 | update per site hazard reports (updated maps as PI) | 3d | 2018-04-26 | 2018-05-02 | 166 |  | must start on 2018-04-26 |  |
| 169 | 1.2.3.3 | **Site 3 Hazard Report** | 16.38d | 2018-05-01 | 2018-05-24 |  |  | start no earlier than 2018-06-08 |  |
| 170 | 1.2.3.3.1 | conduct fieldwork (resurvey) | 5d | 2018-05-01 | 2018-05-08 |  |  | must start on 2018-05-01 |  |
| 171 | 1.2.3.3.2 | conduct fieldwork (resurvey) | 5d | 2018-05-01 | 2018-05-08 |  |  | must start on 2018-05-01 |  |
| 172 | 1.2.3.3.3 | consolidate field notes | 1d | 2018-05-11 | 2018-05-14 | 170, 171 |  | must start on 2018-05-11 |  |
| 173 | 1.2.3.3.4 | consolidate field notes | 1d | 2018-05-11 | 2018-05-14 | 170, 171 |  | must start on 2018-05-11 |  |
| 174 | 1.2.3.3.5 | analyze monitoring data (requires access to database) | 3d | 2018-05-14 | 2018-05-17 | 172, 173 |  | must start on 2018-05-14 |  |
| 175 | 1.2.3.3.6 | update volume, depth, extent (using current models) | 2d | 2018-05-17 | 2018-05-21 | 174 |  | must start on 2018-05-17 |  |
| 176 | 1.2.3.3.7 | update thresholds with monitoring data and performance index | 0d | 2018-05-16 | 2018-05-16 | 184 |  | must start on 2018-05-16 | data scientist 1 [50%] |
| 177 | 1.2.3.3.8 | update per site hazard reports (updated maps as PI) | 3d | 2018-05-21 | 2018-05-24 | 175 |  | must start on 2018-05-21 |  |

| ID | WBS | Task | Duration | Start | Finish | Predecessors | Total slack | Constraint | Resources |
| --- | --- | --- | --- | --- | --- | --- | --- | --- | --- |
| 178 | 1.2.3.4 | **Site 4 Hazard Report** | 39.96d | 2018-06-19 | 2018-08-13 |  | 7500d | start no earlier than 2018-06-24 |  |
| 179 | 1.2.3.4.1 | conduct fieldwork (resurvey) | 5d | 2018-07-25 | 2018-07-31 |  |  | start no earlier than 2018-07-25 |  |
| 180 | 1.2.3.4.2 | conduct fieldwork (resurvey) | 5d | 2018-07-25 | 2018-07-31 |  |  | start no earlier than 2018-07-25 |  |
| 181 | 1.2.3.4.3 | consolidate field notes | 1d | 2018-08-01 | 2018-08-01 | 179, 180 | -4089.58d | start no earlier than 2018-06-01 |  |
| 182 | 1.2.3.4.4 | consolidate field notes | 1d | 2018-08-01 | 2018-08-01 | 179, 180 | -4089.58d | start no earlier than 2018-06-01 |  |
| 183 | 1.2.3.4.5 | analyze monitoring data (requires access to database) | 3d | 2018-08-02 | 2018-08-06 | 181, 182 | -4089.58d | start no earlier than 2018-06-05 |  |
| 184 | 1.2.3.4.6 | update volume, depth, extent (using current models) | 2d | 2018-08-07 | 2018-08-08 | 183 | -4214.58d | start no earlier than 2018-06-06 |  |
| 185 | 1.2.3.4.7 | update thresholds with monitoring data and performance index | 0d | 2018-06-19 | 2018-06-19 | 199 |  | must start on 2018-06-19 | data scientist 1 [50%] |
| 186 | 1.2.3.4.8 | update per site hazard reports (updated maps as PI) | 3d | 2018-08-09 | 2018-08-13 | 184 | 7500d | start no earlier than 2018-06-08 |  |
| 187 | 1.2.3.5 | **Site 5 Hazard Report** | 19.71d | 2018-07-02 | 2018-07-27 |  | 8625d | start no earlier than 2018-07-10 |  |
| 188 | 1.2.3.5.1 | conduct fieldwork (resurvey) | 5d | 2018-07-02 | 2018-07-09 |  |  | must start on 2018-07-02 |  |
| 189 | 1.2.3.5.2 | conduct fieldwork (resurvey) | 5d | 2018-07-02 | 2018-07-09 |  |  | must start on 2018-07-02 |  |
| 190 | 1.2.3.5.3 | consolidate field notes | 1d | 2018-07-16 | 2018-07-17 | 188, 189 | 8650d | start no earlier than 2018-07-16 |  |
| 191 | 1.2.3.5.4 | consolidate field notes | 1d | 2018-07-16 | 2018-07-17 | 188, 189 | 8650d | start no earlier than 2018-07-16 |  |
| 192 | 1.2.3.5.5 | analyze monitoring data (requires access to database) | 3d | 2018-07-17 | 2018-07-20 | 190, 191 | 8625d | start no earlier than 2018-07-17 |  |
| 193 | 1.2.3.5.6 | update volume, depth, extent (using current models) | 2d | 2018-07-20 | 2018-07-24 | 192 | 8625d | start no earlier than 2018-07-19 |  |
| 194 | 1.2.3.5.7 | update thresholds with monitoring data and performance index | 0d | 2018-07-24 | 2018-07-24 | 193 | 8925d | start no earlier than 2018-07-19 | data scientist 1 [50%] |
| 195 | 1.2.3.5.8 | update per site hazard reports (updated maps as PI) | 3d | 2018-07-24 | 2018-07-27 | 193 | 8625d | start no earlier than 2018-07-20 |  |
| 196 | 1.2.4 | **hazard reports (13 sites)** | 66d | 2018-06-13 | 2018-09-14 |  |  | start no earlier than 2018-05-22 |  |
| 197 | 1.2.4.1 | **Site 1 hazard report** | 27.78d | 2018-06-13 | 2018-07-20 |  |  | start no earlier than 2018-05-22 |  |
| 198 | 1.2.4.1.1 | analyze monitoring data (requires access to database) | 4d | 2018-06-13 | 2018-06-18 |  |  | start no earlier than 2018-06-13 |  |
| 199 | 1.2.4.1.2 | update volume, depth, extent (using current models) | 2d | 2018-06-19 | 2018-06-20 | 198 | -196.46d | start no earlier than 2018-06-11 |  |
| 200 | 1.2.4.1.3 | update thresholds with monitoring data and performance index | 0d | 2018-07-20 | 2018-07-20 | 198 |  | start no earlier than 2018-07-20 | data scientist 1 [55%] |
| 201 | 1.2.4.1.4 | update per site hazard reports (updated maps as PI) | 4d | 2018-06-21 | 2018-06-26 | 199 | 277.71d | start no earlier than 2018-06-20 |  |

| ID | WBS | Task | Duration | Start | Finish | Predecessors | Total slack | Constraint | Resources |
| --- | --- | --- | --- | --- | --- | --- | --- | --- | --- |
| 202 | 1.2.4.2 | **Site 2 hazard report** | 23d | 2018-08-13 | 2018-09-14 |  |  | start no earlier than 2018-08-13 |  |
| 203 | 1.2.4.2.1 | analyze monitoring data (requires access to database) | 4d | 2018-08-13 | 2018-08-16 |  | 1300d | start no earlier than 2018-08-13 |  |
| 204 | 1.2.4.2.2 | update volume, depth, extent (using current models) | 2d | 2018-08-31 | 2018-09-03 | 203 | 500d | start no earlier than 2018-08-31 |  |
| 205 | 1.2.4.2.3 | update thresholds with monitoring data and performance index | 2.22d | 2018-08-31 | 2018-09-04 | 203 | 877.77d | start no earlier than 2018-08-31 | data scientist 1 [55%] |
| 206 | 1.2.4.2.4 | update per site hazard reports (updated maps as PI) | 4d | 2018-09-11 | 2018-09-14 | 204 |  | start no earlier than 2018-09-11 |  |
| 207 | 1.2.4.3 | **Site 3 hazard report** | 21d | 2018-08-01 | 2018-08-31 |  |  | start no earlier than 2018-08-01 |  |
| 208 | 1.2.4.3.1 | analyze monitoring data (requires access to database) | 4d | 2018-08-01 | 2018-08-06 |  | 1100d | start no earlier than 2018-08-01 |  |
| 209 | 1.2.4.3.2 | update volume, depth, extent (using current models) | 2d | 2018-08-17 | 2018-08-20 | 208 | 300d | start no earlier than 2018-08-17 |  |
| 210 | 1.2.4.3.3 | update thresholds with monitoring data and performance index | 0d | 2018-08-17 | 2018-08-17 | 208 | 900d | start no earlier than 2018-08-17 | data scientist 1 [55%] |
| 211 | 1.2.4.3.4 | update per site hazard reports (updated maps as PI) | 4d | 2018-08-27 | 2018-08-31 | 209 |  | start no earlier than 2018-08-27 |  |
| 212 | 1.2.4.4 | **Site 4 hazard report** | 21d | 2018-08-01 | 2018-08-31 |  |  | start no earlier than 2018-08-01 |  |
| 213 | 1.2.4.4.1 | analyze monitoring data (requires access to database) | 4d | 2018-08-01 | 2018-08-06 |  | 1100d | start no earlier than 2018-08-01 |  |
| 214 | 1.2.4.4.2 | update volume, depth, extent (using current models) | 2d | 2018-08-17 | 2018-08-20 | 213 | 300d | start no earlier than 2018-08-17 |  |
| 215 | 1.2.4.4.3 | update thresholds with monitoring data and performance index | 0d | 2018-08-17 | 2018-08-17 | 213 | 900d | start no earlier than 2018-08-17 | data scientist 1 [50%] |
| 216 | 1.2.4.4.4 | update per site hazard reports (updated maps as PI) | 4d | 2018-08-27 | 2018-08-31 | 214 |  | start no earlier than 2018-08-27 |  |
| 217 | 1.2.4.5 | **Site 5 hazard report** | 21d | 2018-08-01 | 2018-08-31 |  |  | start no earlier than 2018-08-01 |  |
| 218 | 1.2.4.5.1 | analyze monitoring data (requires access to database) | 4d | 2018-08-01 | 2018-08-06 |  | 1100d | start no earlier than 2018-08-01 |  |
| 219 | 1.2.4.5.2 | update volume, depth, extent (using current models) | 2d | 2018-08-17 | 2018-08-20 | 218 | 300d | start no earlier than 2018-08-17 |  |
| 220 | 1.2.4.5.3 | update thresholds with monitoring data and performance index | 0d | 2018-08-17 | 2018-08-17 | 218 | 900d | start no earlier than 2018-08-17 | data scientist 1 [50%] |
| 221 | 1.2.4.5.4 | update per site hazard reports (updated maps as PI) | 4d | 2018-08-27 | 2018-08-31 | 219 |  | start no earlier than 2018-08-27 |  |
| 222 | 1.2.4.6 | **Site 6 hazard report** | 21d | 2018-08-01 | 2018-08-31 |  |  | start no earlier than 2018-08-01 |  |
| 223 | 1.2.4.6.1 | analyze monitoring data (requires access to database) | 4d | 2018-08-01 | 2018-08-06 |  | 1100d | start no earlier than 2018-08-01 |  |
| 224 | 1.2.4.6.2 | update volume, depth, extent (using current models) | 2d | 2018-08-17 | 2018-08-20 | 223 | 300d | start no earlier than 2018-08-17 |  |
| 225 | 1.2.4.6.3 | update thresholds with monitoring data and performance index | 0d | 2018-08-17 | 2018-08-17 | 223 | 900d | start no earlier than 2018-08-17 | data scientist 1 [55%] |
| 226 | 1.2.4.6.4 | update per site hazard reports (updated maps as PI) | 4d | 2018-08-27 | 2018-08-31 | 224 |  | start no earlier than 2018-08-27 |  |

| ID | WBS | Task | Duration | Start | Finish | Predecessors | Total slack | Constraint | Resources |
| --- | --- | --- | --- | --- | --- | --- | --- | --- | --- |
| 227 | 1.2.4.7 | **Site 7 hazard report** | 21d | 2018-08-01 | 2018-08-31 |  |  | start no earlier than 2018-08-01 |  |
| 228 | 1.2.4.7.1 | analyze monitoring data (requires access to database) | 4d | 2018-08-01 | 2018-08-06 |  | 1100d | start no earlier than 2018-08-01 |  |
| 229 | 1.2.4.7.2 | update volume, depth, extent (using current models) | 2d | 2018-08-17 | 2018-08-20 | 228 | 300d | start no earlier than 2018-08-17 |  |
| 230 | 1.2.4.7.3 | update thresholds with monitoring data and performance index | 0d | 2018-08-17 | 2018-08-17 | 228 | 900d | start no earlier than 2018-08-17 | data scientist 1 [55%] |
| 231 | 1.2.4.7.4 | update per site hazard reports (updated maps as PI) | 4d | 2018-08-27 | 2018-08-31 | 229 |  | start no earlier than 2018-08-27 |  |
| 232 | 1.2.4.8 | **Site 8 hazard report** | 21d | 2018-08-01 | 2018-08-31 |  |  | start no earlier than 2018-08-01 |  |
| 233 | 1.2.4.8.1 | analyze monitoring data (requires access to database) | 4d | 2018-08-01 | 2018-08-06 |  | 1100d | start no earlier than 2018-08-01 |  |
| 234 | 1.2.4.8.2 | update volume, depth, extent (using current models) | 2d | 2018-08-17 | 2018-08-20 | 233 | 300d | start no earlier than 2018-08-17 |  |
| 235 | 1.2.4.8.3 | update thresholds with monitoring data and performance index | 0d | 2018-08-17 | 2018-08-17 | 233 | 900d | start no earlier than 2018-08-17 | data scientist 1 [55%] |
| 236 | 1.2.4.8.4 | update per site hazard reports (updated maps as PI) | 4d | 2018-08-27 | 2018-08-31 | 234 |  | start no earlier than 2018-08-27 |  |
| 237 | 1.2.4.9 | **Site 9 hazard report** | 21d | 2018-08-01 | 2018-08-31 |  |  | start no earlier than 2018-08-01 |  |
| 238 | 1.2.4.9.1 | analyze monitoring data (requires access to database) | 4d | 2018-08-01 | 2018-08-06 |  | 1100d | start no earlier than 2018-08-01 |  |
| 239 | 1.2.4.9.2 | update volume, depth, extent (using current models) | 2d | 2018-08-17 | 2018-08-20 | 238 | 300d | start no earlier than 2018-08-17 |  |
| 240 | 1.2.4.9.3 | update thresholds with monitoring data and performance index | 0d | 2018-08-17 | 2018-08-17 | 238 | 900d | start no earlier than 2018-08-17 | data scientist 1 [50%] |
| 241 | 1.2.4.9.4 | update per site hazard reports (updated maps as PI) | 4d | 2018-08-27 | 2018-08-31 | 239 |  | start no earlier than 2018-08-27 |  |
| 242 | 1.2.4.10 | **Site 10 hazard report** | 21d | 2018-08-01 | 2018-08-31 |  |  | start no earlier than 2018-08-01 |  |
| 243 | 1.2.4.10.1 | analyze monitoring data (requires access to database) | 4d | 2018-08-01 | 2018-08-06 |  | 1100d | start no earlier than 2018-08-01 |  |
| 244 | 1.2.4.10.2 | update volume, depth, extent (using current models) | 2d | 2018-08-17 | 2018-08-20 | 243 | 300d | start no earlier than 2018-08-17 |  |
| 245 | 1.2.4.10.3 | update thresholds with monitoring data and performance index | 0d | 2018-08-17 | 2018-08-17 | 243 | 900d | start no earlier than 2018-08-17 | data scientist 1 [50%] |
| 246 | 1.2.4.10.4 | update per site hazard reports (updated maps as PI) | 4d | 2018-08-27 | 2018-08-31 | 244 |  | start no earlier than 2018-08-27 |  |
| 247 | 1.2.4.11 | **Site 11 hazard report** | 21d | 2018-08-01 | 2018-08-31 |  |  | start no earlier than 2018-08-01 |  |
| 248 | 1.2.4.11.1 | analyze monitoring data (requires access to database) | 4d | 2018-08-01 | 2018-08-06 |  | 1100d | start no earlier than 2018-08-01 |  |
| 249 | 1.2.4.11.2 | update volume, depth, extent (using current models) | 2d | 2018-08-17 | 2018-08-20 | 248 | 300d | start no earlier than 2018-08-17 |  |
| 250 | 1.2.4.11.3 | update thresholds with monitoring data and performance index | 0d | 2018-08-17 | 2018-08-17 | 248 | 900d | start no earlier than 2018-08-17 | data scientist 1 [55%] |
| 251 | 1.2.4.11.4 | update per site hazard reports (updated maps as PI) | 4d | 2018-08-27 | 2018-08-31 | 249 |  | start no earlier than 2018-08-27 |  |

| ID | WBS | Task | Duration | Start | Finish | Predecessors | Total slack | Constraint | Resources |
| --- | --- | --- | --- | --- | --- | --- | --- | --- | --- |
| 252 | 1.2.4.12 | **Site 12 hazard report** | 21d | 2018-08-01 | 2018-08-31 |  |  | start no earlier than 2018-08-01 |  |
| 253 | 1.2.4.12.1 | analyze monitoring data (requires access to database) | 4d | 2018-08-01 | 2018-08-06 |  | 1100d | start no earlier than 2018-08-01 |  |
| 254 | 1.2.4.12.2 | update volume, depth, extent (using current models) | 2d | 2018-08-17 | 2018-08-20 | 253 | 300d | start no earlier than 2018-08-17 |  |
| 255 | 1.2.4.12.3 | update thresholds with monitoring data and performance index | 0d | 2018-08-17 | 2018-08-17 | 253 | 900d | start no earlier than 2018-08-17 | data scientist 1 [55%] |
| 256 | 1.2.4.12.4 | update per site hazard reports (updated maps as PI) | 4d | 2018-08-27 | 2018-08-31 | 254 |  | start no earlier than 2018-08-27 |  |
| 257 | 1.2.4.13 | **Site 13 hazard report** | 21d | 2018-08-01 | 2018-08-31 |  |  | start no earlier than 2018-08-01 |  |
| 258 | 1.2.4.13.1 | analyze monitoring data (requires access to database) | 4d | 2018-08-01 | 2018-08-06 |  | 1100d | start no earlier than 2018-08-01 |  |
| 259 | 1.2.4.13.2 | update volume, depth, extent (using current models) | 2d | 2018-08-17 | 2018-08-20 | 258 | 300d | start no earlier than 2018-08-17 |  |
| 260 | 1.2.4.13.3 | update thresholds with monitoring data and performance index | 0d | 2018-08-17 | 2018-08-17 | 258 | 900d | start no earlier than 2018-08-17 | data scientist 1 [50%] |
| 261 | 1.2.4.13.4 | update per site hazard reports (updated maps as PI) | 4d | 2018-08-27 | 2018-08-31 | 259 |  | start no earlier than 2018-08-27 |  |
| 262 | 2 | **MEAL system** | 209.26d | 2018-02-01 | 2019-01-21 |  | 22787.2d |  |  |
| 263 | 2.1 | sourcing of MEAL expert | 5d | 2018-02-01 | 2018-02-07 |  | 40241.6d |  | elec A 2 |
| 264 | 2.2 | develop MEAL framework and plan | 5d | 2018-02-08 | 2018-02-14 | 263 | 40241.6d |  | db prog 6; arduino prog 1; rpi prog 1; elec A 1; elec A 2; elec A 3; elec B 1; Communitydev3; CommsOfficer1; elec B 2; DRRstaff1; DRRstaff2; DRRstaff3; DRRstaff4; DRRstaff5; Communitydev1; Communitydev2; data scientist 1 |
| 267 | 2.3 | **monitoring mechanisms** | 49d | 2018-02-14 | 2018-05-01 |  | 37812.9d |  |  |
| 268 | 2.3.1 | MEAL 1 (PLAA) | 2d | 2018-02-14 | 2018-02-19 | 264 | 42312.9d |  | db prog 6; elec B 1; elec B 2 |
| 269 | 2.3.2 | MEAL 2 (EWS-QA) | 4d | 2018-02-14 | 2018-02-21 | 264 | 42112.9d |  | arduino prog 1; DRRstaff1; DRRstaff2 |
| 270 | 2.3.3 | MEAL 3 (outcome-impacts; stakeholder concerns) | 4d | 2018-02-14 | 2018-02-21 | 264 | 41812.9d |  | DRRstaff3; DRRstaff4; MEALstaff3 |
| 271 | 2.3.4 | MEAL 4 (project outputs) | 2d | 2018-02-14 | 2018-02-19 | 264 | 41762.9d |  | elec A 1; DRRstaff5; Communitydev1 |
| 272 | 2.3.5 | MEAL 5 (project admin) | 2d | 2018-02-14 | 2018-02-19 | 264 | 42312.9d |  | elec A 2; admin 1 IO; admin 2 S2 |
| 273 | 2.3.6 | MEAL 6 (EWS and others) | 4.2d | 2018-02-14 | 2018-02-22 | 264 | 40341.6d |  | elec A 3; CommsOfficer1; data scientist 1 |
| 274 | 2.3.7 | design repository system | 2d | 2018-02-22 | 2018-02-26 | 268, 269, 270, 271, 272, 273 | 42093.4d |  |  |
| 275 | 2.3.8 | **outcome-impact** | 38d | 2018-03-05 | 2018-05-01 |  |  | start no earlier than 2018-03-05 |  |
| 276 | 2.3.8.1 | review outcome-impact vis-a-vis MEAL plan | 16.13d | 2018-03-05 | 2018-03-27 |  | -93.53d |  | MEALstaff3 [62%] |
| 277 | 2.3.8.2 | revise outcome-impact | 25.81d | 2018-03-27 | 2018-05-01 | 276 |  | start no earlier than 2018-02-01 | MEALstaff3 [62%] |

Notes:
- 267: MEAL x monitoring mechanisms should include design of documentation templates
- 276: MEAL 3 5 6

| ID | WBS | Task | Duration | Start | Finish | Predecessors | Total slack | Constraint | Resources |
| --- | --- | --- | --- | --- | --- | --- | --- | --- | --- |
| 278 | 2.4 | **MEAL implem** | 209.26d | 2018-02-01 | 2019-01-21 |  | 22787.2d |  |  |
| 279 | 2.4.1 | **MEAL 2 (EWS-QA)** | 192.56d | 2018-02-01 | 2018-11-12 |  | 24456.7d |  |  |
| 280 | 2.4.1.1 | **Bimonthly QA** | 177d | 2018-02-01 | 2018-10-17 |  | 25956.7d |  |  |
| 281 | 2.4.1.1.1 | **Feb1** | 1.06d | 2018-02-01 | 2018-02-02 |  | 40400.4d |  |  |
| 282 | 2.4.1.1.1.1 | gather, analyze, evaluate data | 0.06d | 2018-02-01 | 2018-02-01 |  | 40400.4d |  | geol 1; geol 2 |
| 283 | 2.4.1.1.1.2 | prepare for presentation (feedback sessions) | 1d | 2018-02-01 | 2018-02-02 | 282 | 40400.4d |  | arduino prog 1 |
| 284 | 2.4.1.1.2 | **Feb2** | 1d | 2018-02-15 | 2018-02-16 |  | 39556.7d |  |  |
| 285 | 2.4.1.1.2.1 | gather, analyze, evaluate data | 0.5d | 2018-02-15 | 2018-02-15 | 283 | 39506.7d | start no earlier than 2018-02-15 | geol 1; geol 2 |
| 286 | 2.4.1.1.2.2 | prepare for presentation (feedback sessions) | 1d | 2018-02-15 | 2018-02-16 | 285 | 39556.7d |  | DRRstaff1 |
| 287 | 2.4.1.1.3 | **Mar1** | 1.5d | 2018-03-01 | 2018-03-02 |  | 38756.7d |  |  |
| 288 | 2.4.1.1.3.1 | gather, analyze, evaluate data | 0.5d | 2018-03-01 | 2018-03-01 | 286 | 38756.7d | start no earlier than 2018-03-01 | geol 1; geol 2 |
| 289 | 2.4.1.1.3.2 | prepare for presentation (feedback sessions) | 1d | 2018-03-01 | 2018-03-02 | 288 | 38756.7d |  | DRRstaff2 |
| 290 | 2.4.1.1.4 | **Mar 2** | 1.5d | 2018-03-15 | 2018-03-16 |  | 37906.7d |  |  |
| 291 | 2.4.1.1.4.1 | gather, analyze, evaluate data | 0.5d | 2018-03-15 | 2018-03-15 | 289 | 37906.7d | start no earlier than 2018-03-15 | geol 1; geol 2 |
| 292 | 2.4.1.1.4.2 | prepare for presentation (feedback sessions) | 1d | 2018-03-15 | 2018-03-16 | 291 | 37906.7d |  | Communitydev1 |
| 293 | 2.4.1.1.5 | **April 2** | 1.5d | 2018-04-15 | 2018-04-17 |  | 36456.7d |  |  |
| 294 | 2.4.1.1.5.1 | gather, analyze, evaluate data | 0.5d | 2018-04-15 | 2018-04-16 | 332 | 36456.7d | start no earlier than 2018-04-15 | geol 1; geol 2 |
| 295 | 2.4.1.1.5.2 | prepare for presentation (feedback sessions) | 1d | 2018-04-16 | 2018-04-17 | 294 | 36456.7d | start no earlier than 2018-04-16 | data scientist 1 |
| 296 | 2.4.1.1.6 | **May1** | 1.5d | 2018-05-02 | 2018-05-03 |  | 35506.7d |  |  |
| 297 | 2.4.1.1.6.1 | gather, analyze, evaluate data | 0.5d | 2018-05-02 | 2018-05-02 | 295 | 35506.7d | start no earlier than 2018-05-02 | geol 1; geol 2 |
| 298 | 2.4.1.1.6.2 | prepare for presentation (feedback sessions) | 1d | 2018-05-02 | 2018-05-03 | 297 | 35506.7d |  | data scientist 2 |
| 299 | 2.4.1.1.7 | **May2** | 1.5d | 2018-05-15 | 2018-05-16 |  | 34756.7d |  |  |
| 300 | 2.4.1.1.7.1 | gather, analyze, evaluate data | 0.5d | 2018-05-15 | 2018-05-15 | 298 | 34756.7d | start no earlier than 2018-05-15 | geol 1; geol 2 |
| 301 | 2.4.1.1.7.2 | prepare for presentation (feedback sessions) | 1d | 2018-05-15 | 2018-05-16 | 300 | 34756.7d |  | data scientist 3 |

| ID | WBS | Task | Duration | Start | Finish | Predecessors | Total slack | Constraint | Resources |
| --- | --- | --- | --- | --- | --- | --- | --- | --- | --- |
| 302 | 2.4.1.1.8 | **Jun1** | 1.5d | 2018-06-01 | 2018-06-04 |  | 33606.7d |  |  |
| 303 | 2.4.1.1.8.1 | gather, analyze, evaluate data | 0.5d | 2018-06-01 | 2018-06-01 | 301 | 33606.7d | start no earlier than 2018-06-01 | geol 1; geol 2 |
| 304 | 2.4.1.1.8.2 | prepare for presentation (feedback sessions) | 1d | 2018-06-01 | 2018-06-04 | 303 | 33606.7d |  | data scientist 4 |
| 305 | 2.4.1.1.9 | **Jun2** | 1.5d | 2018-06-15 | 2018-06-18 |  | 32856.7d |  |  |
| 306 | 2.4.1.1.9.1 | gather, analyze, evaluate data | 0.5d | 2018-06-15 | 2018-06-15 | 304 | 32856.7d | start no earlier than 2018-06-15 | geol 1; geol 2 |
| 307 | 2.4.1.1.9.2 | prepare for presentation (feedback sessions) | 1d | 2018-06-15 | 2018-06-18 | 306 | 32856.7d |  | arduino prog 1 |
| 308 | 2.4.1.1.10 | **Jul2** | 1.5d | 2018-07-15 | 2018-07-17 |  | 31206.7d |  |  |
| 309 | 2.4.1.1.10.1 | gather, analyze, evaluate data | 0.5d | 2018-07-15 | 2018-07-16 | 335 | 31206.7d | start no earlier than 2018-07-15 | geol 1; geol 2 |
| 310 | 2.4.1.1.10.2 | prepare for presentation (feedback sessions) | 1d | 2018-07-16 | 2018-07-17 | 309 | 31206.7d |  | DRRstaff1 |
| 311 | 2.4.1.1.11 | **Aug1** | 1.5d | 2018-08-01 | 2018-08-02 |  | 30156.7d |  |  |
| 312 | 2.4.1.1.11.1 | gather, analyze, evaluate data | 0.5d | 2018-08-01 | 2018-08-01 | 310 | 30156.7d | start no earlier than 2018-08-01 | geol 1; geol 2 |
| 313 | 2.4.1.1.11.2 | prepare for presentation (feedback sessions) | 1d | 2018-08-01 | 2018-08-02 | 312 | 30156.7d |  | DRRstaff2 |
| 314 | 2.4.1.1.12 | **Aug2** | 1.5d | 2018-08-15 | 2018-08-16 |  | 29306.7d |  |  |
| 315 | 2.4.1.1.12.1 | gather, analyze, evaluate data | 0.5d | 2018-08-15 | 2018-08-15 | 313 | 29306.7d | start no earlier than 2018-08-15 | geol 1; geol 2 |
| 316 | 2.4.1.1.12.2 | prepare for presentation (feedback sessions) | 1d | 2018-08-15 | 2018-08-16 | 315 | 29306.7d |  | Communitydev1 |
| 317 | 2.4.1.1.13 | **Sep1** | 1.5d | 2018-09-01 | 2018-09-04 |  | 28356.7d |  |  |
| 318 | 2.4.1.1.13.1 | gather, analyze, evaluate data | 0.5d | 2018-09-01 | 2018-09-03 | 316 | 28356.7d | start no earlier than 2018-09-01 | geol 1; geol 2 |
| 319 | 2.4.1.1.13.2 | prepare for presentation (feedback sessions) | 1d | 2018-09-03 | 2018-09-04 | 318 | 28356.7d |  | data scientist 1 |
| 320 | 2.4.1.1.14 | **Sep2** | 1.5d | 2018-09-15 | 2018-09-18 |  | 27506.7d |  |  |
| 321 | 2.4.1.1.14.1 | gather, analyze, evaluate data | 0.5d | 2018-09-15 | 2018-09-17 | 319 | 27506.7d | start no earlier than 2018-09-15 | geol 1; geol 2 |
| 322 | 2.4.1.1.14.2 | prepare for presentation (feedback sessions) | 1d | 2018-09-17 | 2018-09-18 | 321 | 27506.7d |  | data scientist 2 |
| 323 | 2.4.1.1.15 | **Oct2** | 1.5d | 2018-10-15 | 2018-10-16 |  | 25956.7d |  |  |
| 324 | 2.4.1.1.15.1 | gather, analyze, evaluate data | 0.5d | 2018-10-15 | 2018-10-15 | 338 | 25956.7d | start no earlier than 2018-10-15 | geol 1; geol 2 |
| 325 | 2.4.1.1.15.2 | prepare for presentation (feedback sessions) | 1d | 2018-10-15 | 2018-10-16 | 324 | 25956.7d |  | data scientist 3 |

| ID | WBS | Task | Duration | Start | Finish | Predecessors | Total slack | Constraint | Resources |
| --- | --- | --- | --- | --- | --- | --- | --- | --- | --- |
| 326 | 2.4.1.1.16 | **Nov1** | 1.5d | 2018-10-16 | 2018-10-17 |  | 25956.7d |  |  |
| 327 | 2.4.1.1.16.1 | gather, analyze, evaluate data | 0.5d | 2018-10-16 | 2018-10-16 | 325 | 25956.7d | start no earlier than 2018-10-15 | geol 1; geol 2 |
| 328 | 2.4.1.1.16.2 | prepare for presentation (feedback sessions) | 1d | 2018-10-17 | 2018-10-17 | 327 | 25956.7d |  | data scientist 4 |
| 329 | 2.4.1.2 | **Quarterly QA** | 128d | 2018-04-01 | 2018-10-03 |  | 26656.7d |  |  |
| 330 | 2.4.1.2.1 | **Q1** | 3d | 2018-04-01 | 2018-04-04 |  | 37056.7d |  |  |
| 331 | 2.4.1.2.1.1 | gather, analyze, evaluate data | 1d | 2018-04-01 | 2018-04-02 | 292 | 37056.7d | start no earlier than 2018-04-01 | geol 1; geol 2 |
| 332 | 2.4.1.2.1.2 | prepare for presentation and written report (feedback sessions) | 2d | 2018-04-03 | 2018-04-04 | 331 | 37056.7d |  | arduino prog 1 |
| 333 | 2.4.1.2.2 | **Q2** | 3d | 2018-07-01 | 2018-07-04 |  | 31906.7d |  |  |
| 334 | 2.4.1.2.2.1 | gather, analyze, evaluate data | 1d | 2018-07-01 | 2018-07-02 | 307 | 31906.7d | start no earlier than 2018-07-01 | geol 1; geol 2 |
| 335 | 2.4.1.2.2.2 | prepare for presentation and written report (feedback sessions) | 2d | 2018-07-03 | 2018-07-04 | 334 | 31906.7d |  | arduino prog 1 |
| 336 | 2.4.1.2.3 | **Q3** | 3d | 2018-10-01 | 2018-10-03 |  | 26656.7d |  |  |
| 337 | 2.4.1.2.3.1 | gather, analyze, evaluate data | 1d | 2018-10-01 | 2018-10-01 | 322 | 26656.7d | start no earlier than 2018-10-01 | geol 1; geol 2 |
| 338 | 2.4.1.2.3.2 | prepare for presentation and written report (feedback sessions) | 2d | 2018-10-02 | 2018-10-03 | 337 | 26656.7d |  | arduino prog 1 |
| 339 | 2.4.1.3 | **Annual QA** | 0.56d | 2018-11-12 | 2018-11-12 |  | 24456.7d |  |  |
| 340 | 2.4.1.3.1 | gather, analyze, evaluate data | 0.56d | 2018-11-12 | 2018-11-12 | 328 | 24456.7d | start no earlier than 2018-11-12 | geol 1; geol 2 |
| 341 | 2.4.1.3.2 | prepare for presentation and written report (post-NOV15) | 0d | 2018-11-12 | 2018-11-12 | 340 | 24456.7d |  | arduino prog 1 |
| 342 | 2.4.2 | **MEAL 1 PLAA** | 209.26d | 2018-02-01 | 2019-01-21 |  | 22787.2d |  |  |
| 343 | 2.4.2.1 | PLAA integration report (2017) | 1d | 2018-02-19 | 2018-02-20 | 268 | 42412.9d |  | db prog 6; elec B 1; elec B 2 |
| 344 | 2.4.2.2 | **site 1** | 200d | 2018-02-01 | 2019-01-07 |  | 16400d | start no earlier than 2018-10-01 |  |
| 345 | 2.4.2.2.1 | conduct landslide fieldwork - write report | 52.03d | 2018-02-01 | 2018-12-12 |  | 16400d | start no earlier than 2018-10-01 | geol 1 [62%] |
| 346 | 2.4.2.2.2 | conduct landslide fieldwork - write report | 22.73d | 2018-02-01 | 2018-10-31 |  | 17227.3d | start no earlier than 2018-10-01 | geol 4 [66%] |
| 347 | 2.4.2.2.3 | review | 5d | 2019-01-01 | 2019-01-07 | 345, 346 | 16400d | start no earlier than 2018-10-30 | db prog 6; elec B 1; elec B 2 |
| 348 | 2.4.2.3 | **site 2** | 172d | 2018-02-05 | 2018-10-12 |  | 14900d | start no earlier than 2018-09-12 |  |
| 349 | 2.4.2.3.1 | conduct landslide fieldwork - write report | 23d | 2018-02-05 | 2018-03-07 |  | 29600d | start no earlier than 2018-09-12 | geotech 2 [54%] |
| 350 | 2.4.2.3.2 | conduct landslide fieldwork - write report | 23d | 2018-02-05 | 2018-03-07 |  | 29600d | start no earlier than 2018-09-12 | geol 2 [62%] |
| 351 | 2.4.2.3.3 | review | 3d | 2018-10-10 | 2018-10-12 | 349, 350 | 14900d | start no earlier than 2018-10-10 | db prog 6; elec B 1; elec B 2 |

Notes:
- 342: mas ipwesto ang karamihan ng PLAA sa 2nd half
- 345: from JJDRS (PAR site)
- 346: (PAR site)
- 349: from RANK (AGB site)
- 350: from MDPM (AGB site)

| ID | WBS | Task | Duration | Start | Finish | Predecessors | Total slack | Constraint | Resources |
| --- | --- | --- | --- | --- | --- | --- | --- | --- | --- |
| 352 | 2.4.2.4 | **site 3** | 188.04d | 2018-02-19 | 2019-01-07 |  | 18100d | start no earlier than 2018-11-12 |  |
| 353 | 2.4.2.4.1 | conduct landslide fieldwork - write report | 37.04d | 2018-02-19 | 2019-01-02 |  | 18100d | start no earlier than 2018-11-12 | geotech 1 [54%] |
| 354 | 2.4.2.4.2 | conduct landslide fieldwork - write report | 24.19d | 2018-02-19 | 2018-12-14 |  | 18203.7d | start no earlier than 2018-11-12 | geol 2 [62%] |
| 355 | 2.4.2.4.3 | review | 3d | 2019-01-02 | 2019-01-07 | 353, 354 | 18100d | start no earlier than 2018-12-10 | db prog 6; elec B 1; elec B 2 |
| 356 | 2.4.2.5 | **site 4** | 39.04d | 2018-06-11 | 2018-08-06 |  |  | start no earlier than 2018-06-11 |  |
| 357 | 2.4.2.5.1 | conduct landslide fieldwork - write report | 37.04d | 2018-06-11 | 2018-08-01 |  |  | start no earlier than 2018-06-11 | geotech 2 [54%] |
| 358 | 2.4.2.5.2 | conduct landslide fieldwork - write report | 15d | 2018-06-11 | 2018-06-29 |  | 2203.69d | start no earlier than 2018-06-11 | geol 5 [66%] |
| 359 | 2.4.2.5.3 | review | 3d | 2018-08-01 | 2018-08-06 | 357, 358 |  | start no earlier than 2018-07-25 | db prog 6; elec B 1; elec B 2 |
| 360 | 2.4.2.6 | **site 5** | 33.3d | 2018-09-03 | 2018-10-18 |  |  | start no earlier than 2018-09-03 |  |
| 361 | 2.4.2.6.1 | conduct landslide fieldwork - write report | 30.3d | 2018-09-03 | 2018-10-15 |  |  | start no earlier than 2018-09-03 | geol 3 [66%] |
| 362 | 2.4.2.6.2 | conduct landslide fieldwork - write report | 22.73d | 2018-09-03 | 2018-10-03 |  | 757.58d | start no earlier than 2018-09-03 | geol 4 [66%] |
| 363 | 2.4.2.6.3 | review | 3d | 2018-10-15 | 2018-10-18 | 361, 362 |  | start no earlier than 2018-10-05 | db prog 6; elec B 1; elec B 2 |
| 364 | 2.4.2.7 | **site 6** | 14.26d | 2018-12-03 | 2019-01-21 |  | -274.2d | start no earlier than 2018-07-01 |  |
| 365 | 2.4.2.7.1 | conduct landslide fieldwork - write report | 32.26d | 2018-12-03 | 2019-01-16 |  |  | start no earlier than 2018-12-03 | geol 2 [62%] |
| 366 | 2.4.2.7.2 | conduct landslide fieldwork - write report | 22.73d | 2018-12-03 | 2019-01-02 |  |  | start no earlier than 2018-12-03 | geol 5 [66%] |
| 367 | 2.4.2.7.3 | review | 3d | 2019-01-16 | 2019-01-21 | 366, 365 | -1225.8d | start no earlier than 2018-12-31 | db prog 6; elec B 1; elec B 2 |
| 368 | 2.4.3 | **MEAL 4 Project Output (ManCom)** | 182.25d | 2018-02-19 | 2018-11-14 |  | 24287.9d |  |  |
| 369 | 2.4.3.1 | **Feb1** | 0.75d | 2018-02-19 | 2018-02-20 |  | 41762.9d |  |  |
| 370 | 2.4.3.1.1 | prepare reports | 0.5d | 2018-02-19 | 2018-02-20 | 271 | 41762.9d |  | geotech 1; geotech 2 |
| 371 | 2.4.3.1.2 | meeting | 0.25d | 2018-02-20 | 2018-02-20 | 370 | 41762.9d |  | geotech 1; geotech 2 |
| 372 | 2.4.3.2 | **Mar1** | 0.75d | 2018-03-20 | 2018-03-21 |  | 39787.9d |  |  |
| 373 | 2.4.3.2.1 | prepare reports | 0.5d | 2018-03-20 | 2018-03-20 | 371 | 39787.9d | start no earlier than 2018-03-20 | geotech 1; geotech 2 |
| 374 | 2.4.3.2.2 | meeting | 0.25d | 2018-03-21 | 2018-03-21 | 373 | 39787.9d |  | geotech 1; geotech 2 |
| 375 | 2.4.3.3 | **Apr1** | 0.75d | 2018-04-20 | 2018-04-20 |  | 37912.9d |  |  |
| 376 | 2.4.3.3.1 | prepare reports | 0.5d | 2018-04-20 | 2018-04-20 | 374 | 37912.9d | start no earlier than 2018-04-20 | geotech 1; geotech 2 |
| 377 | 2.4.3.3.2 | meeting | 0.25d | 2018-04-20 | 2018-04-20 | 376 | 37912.9d |  | geotech 1; geotech 2 |

Notes:
- 353: from CJNC (BAR site)
- 354: from ACJ (BAR site)
- 357: from MJMR
- 358: from JJDRS
- 361: from NASV
- 362: from ACJ
- 365: from JJDRS
- 366: from MDPM

| ID | WBS | Task | Duration | Start | Finish | Predecessors | Total slack | Constraint | Resources |
| --- | --- | --- | --- | --- | --- | --- | --- | --- | --- |
| 378 | 2.4.3.4 | **May1** | 0.75d | 2018-05-20 | 2018-05-21 |  | 35987.9d |  |  |
| 379 | 2.4.3.4.1 | prepare reports | 0.5d | 2018-05-20 | 2018-05-21 | 377 | 35987.9d | start no earlier than 2018-05-20 | geotech 1; geotech 2 |
| 380 | 2.4.3.4.2 | meeting | 0.25d | 2018-05-21 | 2018-05-21 | 379 | 35987.9d |  | geotech 1; geotech 2 |
| 381 | 2.4.3.5 | **Jun1** | 0.75d | 2018-06-20 | 2018-06-21 |  | 33912.9d |  |  |
| 382 | 2.4.3.5.1 | prepare reports | 0.5d | 2018-06-20 | 2018-06-20 | 380 | 33912.9d | start no earlier than 2018-06-20 | geotech 1; geotech 2 |
| 383 | 2.4.3.5.2 | meeting | 0.25d | 2018-06-21 | 2018-06-21 | 382 | 33912.9d |  | geotech 1; geotech 2 |
| 384 | 2.4.3.6 | **Jul1** | 0.75d | 2018-07-20 | 2018-07-20 |  | 31837.9d |  |  |
| 385 | 2.4.3.6.1 | prepare reports | 0.5d | 2018-07-20 | 2018-07-20 | 383 | 31837.9d | start no earlier than 2018-07-20 | geotech 1; geotech 2 |
| 386 | 2.4.3.6.2 | meeting | 0.25d | 2018-07-20 | 2018-07-20 | 385 | 31837.9d |  | geotech 1; geotech 2 |
| 387 | 2.4.3.7 | **Aug1** | 0.75d | 2018-08-20 | 2018-08-22 |  | 29762.9d |  |  |
| 388 | 2.4.3.7.1 | prepare reports | 0.5d | 2018-08-20 | 2018-08-20 | 386 | 29762.9d | start no earlier than 2018-08-20 | geotech 1; geotech 2 |
| 389 | 2.4.3.7.2 | meeting | 0.25d | 2018-08-22 | 2018-08-22 | 388 | 29762.9d |  | geotech 1; geotech 2 |
| 390 | 2.4.3.8 | **Sep1** | 0.75d | 2018-09-20 | 2018-09-21 |  | 27737.9d |  |  |
| 391 | 2.4.3.8.1 | prepare reports | 0.5d | 2018-09-20 | 2018-09-20 | 389 | 27737.9d | start no earlier than 2018-09-20 | geotech 1; geotech 2 |
| 392 | 2.4.3.8.2 | meeting | 0.25d | 2018-09-21 | 2018-09-21 | 391 | 27737.9d |  | geotech 1; geotech 2 |
| 393 | 2.4.3.9 | **Oct1** | 0.75d | 2018-10-20 | 2018-10-22 |  | 25662.9d |  |  |
| 394 | 2.4.3.9.1 | prepare reports | 0.5d | 2018-10-20 | 2018-10-22 | 392 | 25662.9d | start no earlier than 2018-10-20 | geotech 1; geotech 2 |
| 395 | 2.4.3.9.2 | meeting | 0.25d | 2018-10-22 | 2018-10-22 | 394 | 25662.9d |  | geotech 1; geotech 2 |
| 396 | 2.4.3.10 | **Nov1** | 0.75d | 2018-11-13 | 2018-11-14 |  | 24287.9d |  |  |
| 397 | 2.4.3.10.1 | prepare reports | 0.5d | 2018-11-13 | 2018-11-13 | 395 | 24287.9d | start no earlier than 2018-11-13 | geotech 1; geotech 2 |
| 398 | 2.4.3.10.2 | meeting | 0.25d | 2018-11-14 | 2018-11-14 | 397 | 24287.9d |  | geotech 1; geotech 2 |
| 399 | 2.4.4 | **MEAL 3 outcome-impact/stakeholder concerns** | 29d | 2018-02-01 | 2018-03-14 |  | 40812.9d |  |  |
| 400 | 2.4.4.1 | prepare modules (5days) | 5d | 2018-02-21 | 2018-02-28 | 270 | 41812.9d |  | DRRstaff3; DRRstaff4; MEALstaff3 |
| 401 | 2.4.4.2 | Analyze data (20 days) | 19d | 2018-02-01 | 2018-02-28 |  | 40812.9d |  | DRRstaff3; DRRstaff4; MEALstaff3 |
| 402 | 2.4.4.3 | provide recommendations(10days) | 10d | 2018-03-01 | 2018-03-14 | 401 | 40812.9d |  | DRRstaff3; DRRstaff4; MEALstaff3 |

| ID | WBS | Task | Duration | Start | Finish | Predecessors | Total slack | Constraint | Resources |
| --- | --- | --- | --- | --- | --- | --- | --- | --- | --- |
| 403 | 2.4.5 | **MEAL 6 (EWS, others)** | 115d | 2018-06-01 | 2019-01-01 |  | 24112.9d |  |  |
| 404 | 2.4.5.1 | **midyear** | 12.89d | 2018-06-01 | 2018-06-20 |  | 33761.2d |  |  |
| 405 | 2.4.5.1.1 | gather data Q1 | 5.11d | 2018-06-01 | 2018-06-08 | 273 | 33661.2d | start no earlier than 2018-06-01 | elec A 3; CommsOfficer1; data scientist 1 |
| 406 | 2.4.5.1.2 | gather data Q2 | 3.78d | 2018-06-08 | 2018-06-14 | 405 | 33761.2d |  | elec A 3; CommsOfficer1; data scientist 1 |
| 407 | 2.4.5.1.3 | analyze, evaluate data | 3d | 2018-06-14 | 2018-06-19 | 406 | 33761.2d |  | elec A 3; CommsOfficer1; data scientist 1 |
| 408 | 2.4.5.1.4 | provide recommendations | 1d | 2018-06-19 | 2018-06-20 | 407 | 33761.2d |  | elec A 3; CommsOfficer1; data scientist 1 |
| 409 | 2.4.5.2 | **end-year** | 6d | 2018-11-08 | 2019-01-01 |  | 24112.9d |  |  |
| 410 | 2.4.5.2.1 | gather data Q3 | 5d | 2018-11-08 | 2018-11-15 | 408 | 24212.9d | start no earlier than 2018-11-08 | elec A 3; CommsOfficer1; data scientist 1 |
| 411 | 2.4.5.2.2 | gather data Q4 (post Nov15) | 0d | 2019-01-01 | 2019-01-01 | 410 | 24112.9d |  | elec A 3; CommsOfficer1; data scientist 1 |
| 412 | 2.4.5.2.3 | analyze, evaluate data (post Nov15) | 0d | 2019-01-01 | 2019-01-01 | 411 | 24112.9d |  | elec A 3; CommsOfficer1; data scientist 1 |
| 413 | 2.4.5.2.4 | provide recommendations (post-NOV15 | 0d | 2019-01-01 | 2019-01-01 | 412 | 24112.9d |  | elec A 3; CommsOfficer1; data scientist 1 |
| 419 | 3 | TRAININGS | 1d | 2018-02-01 | 2018-02-01 |  | 42335.2d |  |  |
| 420 | 4 | **FRACTIONAL WORK (express frequency or percentage)** | 253d? | 2018-02-01 | 2019-03-21 |  | 18412.9d |  |  |
| 421 | 4.1 | **general staff (30%, assuming 160hours per month)** | 1d? | 2018-02-01 | 2018-02-01 |  | 42335.2d |  |  |
| 422 | 4.1.1 | monitoring duties (40 hours monthly) | 1d? | 2018-02-01 | 2018-02-01 |  | 42335.2d |  |  |
| 423 | 4.1.2 | EWS-QA feedback (4 hours per month) | 1d? | 2018-02-01 | 2018-02-01 |  | 42335.2d |  |  |
| 424 | 4.1.3 | project-wide meetings (2 hours per month) | 1d? | 2018-02-01 | 2018-02-01 |  | 42335.2d |  |  |
| 425 | 4.2 | **management staff** | 1d? | 2018-02-01 | 2018-02-01 |  | 42335.2d |  |  |
| 426 | 4.2.1 | TL meeting preps (6 hours per month; 4% monthly) | 0d | 2018-02-01 | 2018-02-01 |  | 42435.2d |  | data scientist 1 [50%] |
| 427 | 4.2.2 | ManComm meeting, including preps (12 hours per month; 8% monthly) | 1d? | 2018-02-01 | 2018-02-01 |  | 42335.2d |  |  |
| 428 | 4.3 | **admin staff** | 1d? | 2018-02-01 | 2018-02-01 |  | 42335.2d |  |  |
| 429 | 4.3.1 | admin meeting, including preps (3 hours per month) | 1d? | 2018-02-01 | 2018-02-01 |  | 42335.2d |  |  |
| 430 | 4.3.2 | prepare manufacturing docs ( tilt, sensor datalogger ) | 1d? | 2018-02-01 | 2018-02-01 |  | 42335.2d |  |  |
| 431 | 4.3.3 | network subscriptions | 1d? | 2018-02-01 | 2018-02-01 |  | 42335.2d |  |  |
| 432 | 4.3.4 | procurements | 1d? | 2018-02-01 | 2018-02-01 |  | 42335.2d |  |  |
| 433 | 4.3.5 | sweldo | 1d? | 2018-02-01 | 2018-02-01 |  | 42335.2d |  |  |

| ID | WBS | Task | Duration | Start | Finish | Total slack | Resources |
| --- | --- | --- | --- | --- | --- | --- | --- |
| 434 | 4.4 | **OOMP MT** | 253d? | 2018-02-01 | 2019-03-21 | 18412.9d |  |
| 435 | 4.4.1 | conduct routine monitoring (4 hrs per week, 4 persons = 2.5% per month) | 0d | 2018-03-16 | 2018-03-16 | 39435.2d | data scientist 1; data scientist 2; data scientist 3; data scientist 4 |
| 436 | 4.4.2 | support monitoring operations (2 hr per month per person, = 1.25% per month) | 0d | 2018-02-01 | 2018-02-01 | 42435.2d | data scientist 1; data scientist 2; data scientist 3; data scientist 4 |
| 438 | 4.4.3 | **Early warning information** | 120d? | 2018-02-02 | 2018-07-27 | 31612.9d |  |
| 439 | 4.4.3.1 | generate, review, and release EWI | 1d? | 2018-02-02 | 2018-02-02 | 43512.9d |  |
| 440 | 4.4.3.2 | **capable personnel for monitoring and early warning** | 119d? | 2018-02-05 | 2018-07-27 | 31612.9d |  |
| 441 | 4.4.3.2.1 | **develop training materials** | 1d? | 2018-03-14 | 2018-03-15 | 40737.9d |  |
| 442 | 4.4.3.2.1.1 | hazard monitoring | 1d? | 2018-03-14 | 2018-03-15 | 40737.9d |  |
| 443 | 4.4.3.2.1.2 | analysis and validation | 1d? | 2018-03-14 | 2018-03-15 | 40737.9d |  |
| 444 | 4.4.3.2.1.3 | sensor maintenance | 1d? | 2018-03-14 | 2018-03-15 | 40737.9d |  |
| 445 | 4.4.3.2.1.4 | communications protocol | 1d? | 2018-03-14 | 2018-03-15 | 40737.9d |  |
| 446 | 4.4.3.2.2 | **conduct EWS protocol trainings (internal)** | 28d? | 2018-02-05 | 2018-03-15 | 40712.9d |  |
| 447 | 4.4.3.2.2.1 | hazard monitoring | 0d? | 2018-02-23 | 2018-02-23 | 42127.9d |  |
| 448 | 4.4.3.2.2.2 | analysis and validation | 15d? | 2018-02-23 | 2018-03-15 | 40712.9d |  |
| 449 | 4.4.3.2.2.3 | sensor maintenance | 2d? | 2018-02-05 | 2018-02-06 | 43312.9d |  |
| 450 | 4.4.3.2.2.4 | communications protocol | 0d? | 2018-03-13 | 2018-03-13 | 40932.9d |  |
| 451 | 4.4.3.2.3 | **conduct EWS protocol trainings (external)** | 75d | 2018-04-12 | 2018-07-27 | 31612.9d |  |
| 452 | 4.4.3.2.3.1 | **Samar 2** | 20d | 2018-04-12 | 2018-05-10 | 37112.9d |  |
| 453 | 4.4.3.2.3.1.1 | hazards monitoring | 20d | 2018-04-12 | 2018-05-09 | 37212.9d | geol 5 |
| 454 | 4.4.3.2.3.1.2 | analysis and validation | 20d | 2018-04-12 | 2018-05-10 | 37112.9d |  |
| 455 | 4.4.3.2.3.1.3 | communicatins protocol | 20d | 2018-04-12 | 2018-05-10 | 37112.9d |  |
| 456 | 4.4.3.2.3.2 | **Samar 1** | 20d | 2018-05-02 | 2018-05-29 | 35812.9d |  |
| 457 | 4.4.3.2.3.2.1 | hazards monitoring | 20d | 2018-05-02 | 2018-05-29 | 35812.9d | geol 4 |
| 458 | 4.4.3.2.3.2.2 | analysis and validation | 20d | 2018-05-02 | 2018-05-29 | 35812.9d |  |
| 459 | 4.4.3.2.3.2.3 | communicatins protocol | 20d | 2018-05-02 | 2018-05-29 | 35812.9d |  |

Notes:
- 455: Momay
- 459: Pau

| ID | WBS | Task | Duration | Start | Finish | Total slack | Resources |
| --- | --- | --- | --- | --- | --- | --- | --- |
| 460 | 4.4.3.2.3.3 | **Central Mindanao** | 20d | 2018-06-01 | 2018-06-29 | 33612.9d |  |
| 461 | 4.4.3.2.3.3.1 | hazards monitoring | 20d | 2018-06-01 | 2018-06-28 | 33712.9d | geol 3 |
| 462 | 4.4.3.2.3.3.2 | analysis and validation | 20d | 2018-06-01 | 2018-06-29 | 33612.9d |  |
| 463 | 4.4.3.2.3.3.3 | communicatins protocol | 20d | 2018-06-01 | 2018-06-29 | 33612.9d |  |
| 464 | 4.4.3.2.3.4 | **Benguet** | 20d | 2018-07-02 | 2018-07-27 | 31612.9d |  |
| 465 | 4.4.3.2.3.4.1 | hazards monitoring | 20d | 2018-07-02 | 2018-07-27 | 31612.9d | geol 1 |
| 466 | 4.4.3.2.3.4.2 | analysis and validation | 20d | 2018-07-02 | 2018-07-27 | 31612.9d |  |
| 467 | 4.4.3.2.3.4.3 | communicatins protocol | 20d | 2018-07-02 | 2018-07-27 | 31612.9d |  |
| 468 | 4.4.3.2.3.5 | **Mt. Province** | 20d | 2018-04-12 | 2018-05-10 | 37112.9d |  |
| 469 | 4.4.3.2.3.5.1 | hazards monitoring | 20d | 2018-04-12 | 2018-05-09 | 37212.9d | geotech 2 |
| 470 | 4.4.3.2.3.5.2 | analysis and validation | 20d | 2018-04-12 | 2018-05-10 | 37112.9d |  |
| 471 | 4.4.3.2.3.5.3 | communicatins protocol | 20d | 2018-04-12 | 2018-05-10 | 37112.9d |  |
| 472 | 4.4.3.2.3.6 | **Leyte** | 20d | 2018-05-02 | 2018-05-29 | 35812.9d |  |
| 473 | 4.4.3.2.3.6.1 | hazards monitoring | 20d | 2018-05-02 | 2018-05-29 | 35812.9d | geol 2 |
| 474 | 4.4.3.2.3.6.2 | analysis and validation | 20d | 2018-05-02 | 2018-05-29 | 35812.9d |  |
| 475 | 4.4.3.2.3.6.3 | communicatins protocol | 20d | 2018-05-02 | 2018-05-29 | 35812.9d |  |
| 476 | 4.4.3.2.3.7 | **South Luzon** | 20d | 2018-06-01 | 2018-06-29 | 33612.9d |  |
| 477 | 4.4.3.2.3.7.1 | hazards monitoring | 20d | 2018-06-01 | 2018-06-28 | 33712.9d | geotech 1 |
| 478 | 4.4.3.2.3.7.2 | analysis and validation | 20d | 2018-06-01 | 2018-06-29 | 33612.9d |  |
| 479 | 4.4.3.2.3.7.3 | communicatins protocol | 20d | 2018-06-01 | 2018-06-29 | 33612.9d |  |
| 480 | 4.4.3.2.3.8 | **Central visayas** | 20d | 2018-07-02 | 2018-07-27 | 31612.9d |  |
| 481 | 4.4.3.2.3.8.1 | hazards monitoring | 20d | 2018-07-02 | 2018-07-27 | 31612.9d |  |
| 482 | 4.4.3.2.3.8.2 | analysis and validation | 20d | 2018-07-02 | 2018-07-27 | 31612.9d |  |
| 483 | 4.4.3.2.3.8.3 | communicatins protocol | 20d | 2018-07-02 | 2018-07-27 | 31612.9d |  |

Notes:
- 463: Anne
- 467: Ken
- 471: Camille
- 475: Lem
- 479: Carla
- 482: Leo
- 483: Biboy

| ID | WBS | Task | Duration | Start | Finish | Total slack |
| --- | --- | --- | --- | --- | --- | --- |
| 484 | 4.4.3.2.3.9 | **Davao** | 20d | 2018-04-12 | 2018-05-10 | 37112.9d |
| 485 | 4.4.3.2.3.9.1 | hazards monitoring | 20d | 2018-04-12 | 2018-05-10 | 37112.9d |
| 486 | 4.4.3.2.3.9.2 | analysis and validation | 20d | 2018-04-12 | 2018-05-10 | 37112.9d |
| 487 | 4.4.3.2.3.9.3 | communicatins protocol | 20d | 2018-04-12 | 2018-05-10 | 37112.9d |
| 488 | 4.4.3.2.3.10 | **Surigao-Agusan** | 20d | 2018-05-02 | 2018-05-29 | 35812.9d |
| 489 | 4.4.3.2.3.10.1 | hazards monitoring | 20d | 2018-05-02 | 2018-05-29 | 35812.9d |
| 490 | 4.4.3.2.3.10.2 | analysis and validation | 20d | 2018-05-02 | 2018-05-29 | 35812.9d |
| 491 | 4.4.3.2.3.10.3 | communicatins protocol | 20d | 2018-05-02 | 2018-05-29 | 35812.9d |
| 492 | 4.4.3.2.3.11 | **North Luzon** | 20d | 2018-06-01 | 2018-06-29 | 33612.9d |
| 493 | 4.4.3.2.3.11.1 | hazards monitoring | 20d | 2018-06-01 | 2018-06-29 | 33612.9d |
| 494 | 4.4.3.2.3.11.2 | analysis and validation | 20d | 2018-06-01 | 2018-06-29 | 33612.9d |
| 495 | 4.4.3.2.3.11.3 | communicatins protocol | 20d | 2018-06-01 | 2018-06-29 | 33612.9d |
| 496 | 4.4.3.2.3.12 | **Panay** | 20d | 2018-07-02 | 2018-07-27 | 31612.9d |
| 497 | 4.4.3.2.3.12.1 | hazards monitoring | 20d | 2018-07-02 | 2018-07-27 | 31612.9d |
| 498 | 4.4.3.2.3.12.2 | analysis and validation | 20d | 2018-07-02 | 2018-07-27 | 31612.9d |
| 499 | 4.4.3.2.3.12.3 | communicatins protocol | 20d | 2018-07-02 | 2018-07-27 | 31612.9d |
| 500 | 4.4.4 | create summary report of protocol trainings | 152d? | 2018-07-02 | 2019-03-21 | 17135.2d |

Notes:
- 486: Carlo
- 487: Anne
- 490: Marvin
- 491: Eunice
- 494: Meryll
- 495: Harry
- 498: Sir Jun
- 499: Pati
